How a schedule from MS Project changed from version to version. A marks actual dates.

## Version 1 (saved 2023-04-27)

| ID | WBS | Task | Duration | Start | Finish | Predecessors | Total float |
| --- | --- | --- | --- | --- | --- | --- | --- |
| 1 | 1 | **Desarrollo Gestión de sistemas CUValles** | 213d | 2023-03-06 | 2023-12-27 |  | 0d |
| 2 | 1.1 | **FASE DE INICIO** | 13d | 2023-03-06 | 2023-03-22 |  | 0d |
| 3 |  | Reunión de Visión del proyecto | 1d | 2023-03-06 | 2023-03-06 |  | 0d |
| 4 |  | Declaración de la visión del proyecto | 2d | 2023-03-07 | 2023-03-08 | 3 | 0d |
| 5 |  | Descripción del producto | 2d | 2023-03-09 | 2023-03-10 | 4 | 0d |
| 6 |  | Identificación de requisitos | 3d | 2023-03-13 | 2023-03-15 | 5 | 0d |
| 7 |  | Identificar el Administrador y patrocinador | 1d | 2023-03-16 | 2023-03-16 | 6 | 0d |
| 8 |  | Elaborar enunciado del Trabajo | 2d | 2023-03-17 | 2023-03-20 | 7 | 0d |
| 9 |  | Elaborar Acta Constitutiva del proyecto | 2d | 2023-03-21 | 2023-03-22 | 8 | 0d |
| 10 |  | Fin de la fase de Inicio | 0d | 2023-03-22 | 2023-03-22 | 9 | 0d |
| 11 | 1.2 | **FASE DE PLANIFICACIÓN Y ESTIMACIÓN** | 200d | 2023-03-23 | 2023-12-27 |  | 0d |
| 12 | 1.2.1 | **RECOLECCIÓN DE REQUISITOS** | 71d | 2023-03-23 | 2023-06-29 |  | 0d |
| 13 |  | Determinar fuentes de requisitos y técnicas para recabarlos | 5d | 2023-03-23 | 2023-05-15 | 10 | 0d |
| 14 |  | Ejecutar la recolección | 5d | 2023-05-16 | 2023-05-22 | 13 | 0d |
| 15 |  | Analizar los requisitos (clasificar, priorizar, modelar) | 1d | 2023-05-23 | 2023-05-23 | 14 | 0d |
| 16 |  | Documentar los requisitos | 12d | 2023-05-24 | 2023-06-29 | 15 | 0d |
| 17 |  | Redactar las Historias de Usuario | 10d | 2023-06-16 | 2023-06-29 | 16FF | 0d |
| 18 |  | Verificar los requisitos | 5d | 2023-06-23 | 2023-06-29 | 16FF | 0d |
| 19 |  | Fin de Recolección de Requisitos | 0d | 2023-06-29 | 2023-06-29 | 18 | 0d |
| 20 | 1.2.2 | **DEFINICIÓN DE ALCANCE** | 8d | 2023-06-30 | 2023-07-11 | 12 | 0d |
| 21 |  | Determinar el método de trabajo a aplicar | 1d | 2023-06-30 | 2023-06-30 | 18 | 0d |
| 22 |  | Definir el ciclo de vida del proyecto | 2d | 2023-07-03 | 2023-07-04 | 21 | 0d |
| 23 |  | Especificar la metodología del proyecto | 2d | 2023-07-05 | 2023-07-06 | 22 | 0d |
| 24 |  | Listar los entregables del proyecto | 3d | 2023-07-07 | 2023-07-11 | 23 | 0d |
| 25 | 1.2.3 | **CREACIÓN DEL EDT** | 1d | 2023-07-12 | 2023-07-12 |  | 0d |
| 26 |  | Elaborar EDT | 1d | 2023-07-12 | 2023-07-12 | 24 | 0d |
| 27 | 1.2.4 | **ADMINISTRACIÓN DEL TIEMPO** | 6d | 2023-07-13 | 2023-07-20 | 25 | 0d |
| 28 |  | Desarrollo del cronograma del proyecto | 5d | 2023-07-13 | 2023-07-19 | 25 | 0d |
| 29 |  | Desarrollo del Diagrama de Red | 1d | 2023-07-20 | 2023-07-20 | 28 | 0d |
| 30 | 1.2.5 | **ADMINISTRACIÓN DEL COSTO** | 10d | 2023-07-21 | 2023-08-03 | 25 | 0d |
| 31 |  | Preparación del Presupuesto | 5d | 2023-07-21 | 2023-07-27 | 29 | 0d |
| 32 |  | Elaboración del Flujo de Efectivo | 5d | 2023-07-28 | 2023-08-03 | 31 | 0d |
| 33 | 1.2.6 | **ADMINISTRACIÓN DE LA CALIDAD** | 5d | 2023-08-04 | 2023-08-10 | 25 | 0d |
| 34 |  | Planificación de la calidad | 5d | 2023-08-04 | 2023-08-10 | 32 | 0d |
| 35 | 1.2.7 | **ADMINISTRACIÓN DE RECURSOS HUMANOS** | 2d | 2023-08-11 | 2023-08-14 | 34 | 0d |
| 36 |  | Planificación de los recursos humano | 2d | 2023-08-11 | 2023-08-14 | 34 | 0d |
| 37 | 1.2.8 | **ADMINISTRACIÓN DE RIESGOS** | 4d | 2023-08-15 | 2023-08-18 | 34 | 0d |
| 38 |  | Identiﬁcación de los Riesgos | 2d | 2023-08-15 | 2023-08-16 | 36 | 0d |
| 39 |  | Cualiﬁcación y cuantiﬁcación de los Riesgos | 1d | 2023-08-16 | 2023-08-16 | 38FF | 95d |
| 40 |  | Deﬁnición de acciones preventivas para los riesgos | 1d | 2023-08-16 | 2023-08-16 | 38FF | 95d |
| 41 |  | Definir las Acciones Correctivas | 1d | 2023-08-16 | 2023-08-16 | 38FF | 0d |
| 42 |  | Elaborar el Plan de respuesta a los riesgos | 2d | 2023-08-17 | 2023-08-18 | 41 | 0d |
| 43 | 1.2.9 | **ADMINISTRACIÓN DE INTEGRACION** | 2d | 2023-08-21 | 2023-08-22 | 42 | 0d |
| 44 |  | Cruzar la información de los documentos obtenidos y veriﬁcar su consistencia | 1d | 2023-08-21 | 2023-08-21 | 42 | 0d |
| 45 |  | Completar la EDT, el Cronograma y el Presupuesto, incluyendo las actividades, tiempos y costos | 1d | 2023-08-22 | 2023-08-22 | 44 | 0d |
| 46 |  | Decidir sobre la administración del cambio y la administración de la conﬁguración | 2d | 2023-08-21 | 2023-08-22 | 45FF | 0d |
| 47 |  | Integrar el plan del proyecto | 2d | 2023-08-21 | 2023-08-22 | 46FF | 0d |
| 48 | 1.2.10 | **PLANIFICACIÓN DE SPRINT** | 2d | 2023-08-23 | 2023-08-24 |  | 0d |
| 49 |  | Reunión para Planificar los Sprint Backlog | 1d | 2023-08-23 | 2023-08-23 | 47 | 0d |
| 50 |  | Elaborar documento Sprint Backlog | 1d | 2023-08-24 | 2023-08-24 | 49 | 0d |
| 51 |  | Fin de la fase de Planificación y Estimación | 0d | 2023-08-24 | 2023-08-24 | 50 | 89d |
| 52 | 1.2.12 | **CORRECCIÓN DE SPRINT** | 10d | 2023-12-14 | 2023-12-27 | 64FS+4d | 0d |
| 53 |  | Identificar el problema | 1d | 2023-12-14 | 2023-12-14 | 64 | 0d |
| 54 |  | Busqueda de solución | 2d | 2023-12-15 | 2023-12-18 | 53 | 0d |
| 55 |  | Planificar el Backlog | 5d | 2023-12-19 | 2023-12-25 | 54 | 0d |
| 56 |  | Elaborar documento del sprint Backlog | 2d | 2023-12-26 | 2023-12-27 | 55 | 0d |
| 57 | 1.3 | **FASE DE IMPLEMENTACIÓN** | 70d | 2023-08-25 | 2023-11-30 |  | 0d |
| 58 |  | Daily Standup | 2d | 2023-08-25 | 2023-08-28 | 50 | 0d |
| 59 |  | Implementación del sprint del Módulo Usuarios y Roles | 10d | 2023-08-29 | 2023-09-11 | 58 | 0d |
| 60 |  | Implementación del sprint del Módulo Áreas | 12d | 2023-09-12 | 2023-09-27 | 59 | 0d |
| 61 |  | Implementación del sprint del Módulo Procesos | 12d | 2023-09-28 | 2023-10-13 | 60 | 0d |
| 62 |  | Implementación del sprint del Módulo Actividad | 15d | 2023-10-16 | 2023-11-03 | 61 | 0d |
| 63 |  | Implementación del sprint del Módulo Formulario | 19d | 2023-11-06 | 2023-11-30 | 62 | 0d |
| 64 | 1.4 | **FASE DE REVICIÓN Y RESTROSPECTIVA** | 63d | 2023-09-12 | 2023-12-07 |  | 0d |
| 65 |  | Reunión de Retrospectiva | 1d | 2023-12-01 | 2023-12-01 | 63 | 4d |
| 66 |  | Revisión del sprint del Módulo Usuarios y Roles | 5d | 2023-09-12 | 2023-09-18 | 59 | 58d |
| 67 |  | Revisión del sprint del Módulo Áreas | 3d | 2023-09-28 | 2023-10-02 | 60 | 48d |
| 68 |  | Revisión del sprint del Módulo Procesos | 5d | 2023-10-16 | 2023-10-20 | 61 | 34d |
| 69 |  | Revisión del sprint del Módulo Actividad | 5d | 2023-11-06 | 2023-11-10 | 62 | 19d |
| 70 |  | Revisión del sprint del Módulo Formulario | 5d | 2023-12-01 | 2023-12-07 | 63 | 0d |

| ID | WBS | Task | Duration | Start | Finish | Predecessors | Total float |
| --- | --- | --- | --- | --- | --- | --- | --- |
| 71 | 1.5 | **LANZAMIENTO** | 3d | 2023-12-08 | 2023-12-12 |  | 11d |
| 72 |  | Envio de Entregables | 1d | 2023-12-08 | 2023-12-08 | 70 | 11d |
| 73 |  | Retrospectiva del Proyecto | 2d | 2023-12-11 | 2023-12-12 | 72 | 11d |

## Version 2 (saved 2023-05-07)

Note of the change: Update Cronograma del tiempo (GANTT).mpp

Last finish 2023-12-27 → 2024-01-05 (+9d).

Changed:

| ID | Task | Start | Finish | Duration | Total float | Predecessors | Other |
| --- | --- | --- | --- | --- | --- | --- | --- |
| 1 | **Desarrollo Gestión de sistemas CUValles** |  | 2023-12-27 → 2024-01-05 (+9d) | 213d → 220d |  |  |  |
| 11 | **FASE DE PLANIFICACIÓN Y ESTIMACIÓN** |  | 2023-12-27 → 2023-09-13 (-105d) | 200d → 125d |  | none → 2 |  |
| 12 | **RECOLECCIÓN DE REQUISITOS** |  |  |  |  | none → 2 |  |
| 25 | **CREACIÓN DEL EDT** |  |  |  |  | none → 20 |  |
| 30 | **ADMINISTRACIÓN DEL COSTO** |  |  |  |  | 25 → 27 |  |
| 33 | **ADMINISTRACIÓN DE LA CALIDAD** |  |  |  |  | 25 → 30 |  |
| 35 | **ADMINISTRACIÓN DE RECURSOS HUMANOS** |  |  |  |  | 34 → 33 |  |
| 37 | **ADMINISTRACIÓN DE RIESGOS** |  |  |  |  | 34 → 35 |  |
| 43 | **ADMINISTRACIÓN DE INTEGRACIÓN** |  |  |  |  | 42 → 37 | was named ADMINISTRACIÓN DE INTEGRACION |
| 48 | **PLANIFICACIÓN DE SPRINT** |  |  |  |  | none → 43 |  |
| 51 | **CORRECCIÓN DE SPRINT** | 2023-12-14 → 2023-08-31 (-105d) | 2023-12-27 → 2023-09-13 (-105d) |  |  | 64FS+4d → 48FS+4d |  |
| 52 | Identificar el problema | 2023-12-14 → 2023-08-31 (-105d) | 2023-12-14 → 2023-08-31 (-105d) |  |  | 64 → 50 |  |
| 53 | Busqueda de solución | 2023-12-15 → 2023-09-01 (-105d) | 2023-12-18 → 2023-09-04 (-105d) |  |  |  |  |
| 54 | Planificar el Backlog | 2023-12-19 → 2023-09-05 (-105d) | 2023-12-25 → 2023-09-11 (-105d) |  |  |  |  |
| 55 | Elaborar documento del sprint Backlog | 2023-12-26 → 2023-09-12 (-105d) | 2023-12-27 → 2023-09-13 (-105d) |  |  |  |  |
| 56 | Fin de la fase de Planificación y Estimación | 2023-08-24 → 2023-09-13 (+20d) | 2023-08-24 → 2023-09-13 (+20d) |  | 89d → 0d | 50 → 55 |  |
| 57 | **FASE DE IMPLEMENTACIÓN** | 2023-08-25 → 2023-09-14 (+20d) | 2023-11-30 → 2023-12-21 (+21d) | 70d → 71d |  | none → 11 |  |
| 58 | Daily Standup | 2023-08-25 → 2023-09-14 (+20d) | 2023-08-28 → 2023-09-15 (+18d) |  |  | 50 → 55 |  |
| 59 | Implementación del sprint del Módulo Usuarios y Roles | 2023-08-29 → 2023-09-18 (+20d) | 2023-09-11 → 2023-09-29 (+18d) |  |  |  |  |
| 60 | Implementación del sprint del Módulo Áreas | 2023-09-12 → 2023-10-02 (+20d) | 2023-09-27 → 2023-10-17 (+20d) |  |  |  |  |
| 61 | Implementación del sprint del Módulo Procesos | 2023-09-28 → 2023-10-18 (+20d) | 2023-10-13 → 2023-11-02 (+20d) |  |  |  |  |
| 62 | Implementación del sprint del Módulo Actividad | 2023-10-16 → 2023-11-03 (+18d) | 2023-11-03 → 2023-11-23 (+20d) |  |  |  |  |
| 63 | Implementación del sprint del Módulo Formulario | 2023-11-06 → 2023-11-24 (+18d) | 2023-11-30 → 2023-12-21 (+21d) | 19d → 20d |  |  |  |
| 64 | **FASE DE REVICIÓN Y RESTROSPECTIVA** | 2023-09-12 → 2023-12-22 (+101d) | 2023-12-07 → 2024-01-02 (+26d) | 63d → 8d |  | none → 57 |  |
| 65 | Reunión de Retrospectiva | 2023-12-01 → 2023-12-22 (+21d) | 2023-12-01 → 2023-12-22 (+21d) |  | 4d → 7d |  |  |
| 66 | Revisión del sprint del Módulo Usuarios y Roles | 2023-09-12 → 2023-12-22 (+101d) | 2023-09-18 → 2023-12-28 (+101d) |  | 58d → 3d |  |  |
| 67 | Revisión del sprint del Módulo Áreas | 2023-09-28 → 2023-12-22 (+85d) | 2023-10-02 → 2023-12-28 (+87d) | 3d → 5d | 48d → 3d |  |  |
| 68 | Revisión del sprint del Módulo Procesos | 2023-10-16 → 2023-12-22 (+67d) | 2023-10-20 → 2023-12-29 (+70d) | 5d → 6d | 34d → 2d |  |  |
| 69 | Revisión del sprint del Módulo Actividad | 2023-11-06 → 2023-12-22 (+46d) | 2023-11-10 → 2023-12-29 (+49d) | 5d → 6d | 19d → 2d |  |  |
| 70 | Revisión del sprint del Módulo Formulario | 2023-12-01 → 2023-12-22 (+21d) | 2023-12-07 → 2024-01-02 (+26d) | 5d → 8d |  |  |  |
| 71 | **LANZAMIENTO** | 2023-12-08 → 2024-01-03 (+26d) | 2023-12-12 → 2024-01-05 (+24d) |  | 11d → 0d | none → 64 |  |
| 72 | Envio de Entregables | 2023-12-08 → 2024-01-03 (+26d) | 2023-12-08 → 2024-01-03 (+26d) |  | 11d → 0d | 70 → 64 |  |
| 73 | Retrospectiva del Proyecto | 2023-12-11 → 2024-01-04 (+24d) | 2023-12-12 → 2024-01-05 (+24d) |  | 11d → 0d |  |  |

## Version 3 (saved 2023-05-07)

Note of the change: Update Cronograma del tiempo (GANTT).mpp

Last finish stays 2024-01-05.

Changed:

| ID | Task | Start | Duration | Other |
| --- | --- | --- | --- | --- |
| 1 | **Desarrollo Gestión de sistemas CUValles** |  |  | resources none → Internet [0.1%] |
| 3 | Reunión de Visión del proyecto |  |  | resources none → Liusmila [75%]; LaptoL [1 Unidad]; Transporte [0.1%] |
| 4 | Declaración de la visión del proyecto |  |  | resources none → Liusmila [75%]; LaptoL [1 Unidad]; Transporte [0.1%] |
| 5 | Descripción del producto |  |  | resources none → LaptoL [1 Unidad]; Irais [75%] |
| 6 | Identificación de requisitos |  |  | resources none → Eric [75%]; LaptoE [1 Unidad]; Transporte [0.1%] |
| 7 | Identificar el Administrador y patrocinador |  |  | resources none → Liusmila [75%]; LaptoL [1 Unidad]; Transporte [0.1%] |
| 8 | Elaborar enunciado del Trabajo |  |  | resources none → Irais [75%]; LaptoI [1 Unidad] |
| 9 | Elaborar Acta Constitutiva del proyecto |  |  | resources none → Liusmila [75%]; LaptoL [1 Unidad]; Transporte [0.1%] |
| 10 | Fin de la fase de Inicio |  |  | resources none → Liusmila [75%]; LaptoL |
| 13 | Determinar fuentes de requisitos y técnicas para recabarlos |  |  | resources none → Eric [75%]; LaptoE [1 Unidad]; Transporte [0.1%] |
| 14 | Ejecutar la recolección |  |  | resources none → Eric [75%]; LaptoE [1 Unidad]; Transporte [0.1%]; Irais [75%]; Jhair [75%]; LaptoD [1 Unidad]; LaptoI [1 Unidad]; LaptoJ [1 Unidad]; LaptoL [1 Unidad]; Darián [75%]; Liusmila [75%] |
| 15 | Analizar los requisitos (clasificar, priorizar, modelar) |  |  | resources none → Eric [75%]; LaptoE [1 Unidad]; Transporte [0.1%] |
| 16 | Documentar los requisitos |  |  | resources none → LaptoE [1 Unidad]; Transporte [0.1%]; Eric [75%]; Irais; Jhair; LaptoD [1 Unidad]; LaptoI [1 Unidad]; LaptoJ [1 Unidad]; LaptoL [1 Unidad]; Darián; Liusmila |
| 17 | Redactar las Historias de Usuario | 2023-06-16 → 2023-06-12 (-4d) | 10d → 13.33d | resources none → LaptoE [1 Unidad]; Transporte [0.1%]; Eric [75%]; Irais [75%]; Jhair [75%]; LaptoD [1 Unidad]; LaptoI [1 Unidad]; LaptoJ [1 Unidad]; LaptoL [1 Unidad]; Darián [75%]; Liusmila [75%] |
| 18 | Verificar los requisitos |  |  | resources none → Eric [75%]; LaptoE [1 Unidad]; Transporte [0.1%] |
| 19 | Fin de Recolección de Requisitos |  |  | resources none → Eric [75%]; LaptoE; Transporte |
| 21 | Determinar el método de trabajo a aplicar |  |  | resources none → Jhair [75%]; LaptoJ [1 Unidad] |
| 22 | Definir el ciclo de vida del proyecto |  |  | resources none → Jhair [75%]; LaptoJ [1 Unidad] |
| 23 | Especificar la metodología del proyecto |  |  | resources none → Jhair [75%]; LaptoJ [1 Unidad] |
| 24 | Listar los entregables del proyecto |  |  | resources none → Jhair [75%]; LaptoJ [1 Unidad] |
| 26 | Elaborar EDT |  |  | resources none → LaptoD [1 Unidad]; Darián [75%] |
| 28 | Desarrollo del cronograma del proyecto |  |  | resources none → LaptoD [1 Unidad]; Darián [75%] |
| 29 | Desarrollo del Diagrama de Red |  |  | resources none → LaptoD [1 Unidad]; Darián [75%] |
| 31 | Preparación del Presupuesto |  |  | resources none → Liusmila [75%]; LaptoL [1 Unidad] |
| 32 | Elaboración del Flujo de Efectivo |  |  | resources none → Liusmila [75%]; LaptoL [1 Unidad] |
| 34 | Planificación de la calidad |  |  | resources none → Irais [75%]; LaptoI [1 Unidad] |
| 36 | Planificación de los recursos humano |  |  | resources none → Eric [75%]; LaptoE [1 Unidad]; Transporte [0.1%] |
| 38 | Identiﬁcación de los Riesgos |  |  | resources none → Jhair [75%]; LaptoJ [1 Unidad] |
| 39 | Cualiﬁcación y cuantiﬁcación de los Riesgos |  |  | resources none → Jhair [75%]; LaptoJ [1 Unidad] |
| 40 | Deﬁnición de acciones preventivas para los riesgos |  |  | resources none → Jhair [75%]; LaptoJ [1 Unidad] |
| 41 | Definir las Acciones Correctivas |  |  | resources none → Jhair [75%]; LaptoJ [1 Unidad] |
| 42 | Elaborar el Plan de respuesta a los riesgos |  |  | resources none → Jhair [75%]; LaptoJ [1 Unidad] |
| 44 | Cruzar la información de los documentos obtenidos y veriﬁcar su consistencia |  |  | resources none → Jhair [75%]; LaptoJ [1 Unidad] |
| 45 | Completar la EDT, el Cronograma y el Presupuesto, incluyendo las actividades, tiempos y costos |  |  | resources none → Jhair [75%]; LaptoJ [1 Unidad] |
| 46 | Decidir sobre la administración del cambio y la administración de la conﬁguración |  |  | resources none → Jhair [75%]; LaptoJ [1 Unidad] |
| 47 | Integrar el plan del proyecto |  |  | resources none → Jhair [75%]; LaptoJ [1 Unidad] |
| 49 | Reunión para Planificar los Sprint Backlog |  |  | resources none → Liusmila [75%]; Eric [75%]; Darián [75%]; LaptoE [1 Unidad]; LaptoL [1 Unidad]; LaptoD [1 Unidad] |
| 50 | Elaborar documento Sprint Backlog |  |  | resources none → Eric [75%]; LaptoE [1 Unidad] |
| 51 | **PLANIFICACIÓN DE CORRECCIÓN DE SPRINT** |  |  | was named CORRECCIÓN DE SPRINT |
| 52 | Identificar el problema |  |  | resources none → Liusmila [75%]; Darián [75%]; Irais [75%]; LaptoD [1 Unidad]; LaptoI [1 Unidad]; LaptoL [1 Unidad] |
| 53 | Busqueda de solución |  |  | resources none → Liusmila [75%]; Darián [75%]; Irais [75%]; LaptoD [1 Unidad]; LaptoI [1 Unidad]; LaptoL [1 Unidad] |
| 54 | Planificar el Backlog |  |  | resources none → Liusmila [75%]; Darián [75%]; Irais [75%]; LaptoD [1 Unidad]; LaptoI [1 Unidad]; LaptoL [1 Unidad] |
| 55 | Elaborar documento del sprint Backlog |  |  | resources none → Darián [75%]; LaptoD [1 Unidad] |
| 56 | Fin de la fase de Planificación y Estimación |  |  | resources none → Darián [75%]; LaptoD |
| 58 | Daily Standup |  |  | resources none → Liusmila [75%]; Darián [75%]; Eric [75%]; Irais [75%]; Jhair [75%]; LaptoD [1 Unidad]; LaptoE [1 Unidad]; LaptoI [1 Unidad]; LaptoJ [1 Unidad]; LaptoL [1 Unidad] |
| 59 | Implementación del sprint del Módulo Usuarios y Roles |  |  | resources none → Liusmila [75%]; LaptoL [1 Unidad] |
| 60 | Implementación del sprint del Módulo Áreas |  |  | resources none → Irais [75%]; LaptoI [1 Unidad] |
| 61 | Implementación del sprint del Módulo Procesos |  |  | resources none → Darián [75%]; LaptoD [1 Unidad] |
| 62 | Implementación del sprint del Módulo Actividad |  |  | resources none → Eric [75%]; LaptoE [1 Unidad] |
| 63 | Implementación del sprint del Módulo Formulario |  |  | resources none → Jhair [75%]; LaptoJ [1 Unidad] |
| 65 | Reunión de Retrospectiva |  |  | resources none → Darián [75%]; Eric [75%]; Internet [0.1%]; Irais [75%]; Jhair [75%]; LaptoD [1 Unidad]; LaptoE [1 Unidad]; LaptoI [1 Unidad]; LaptoJ [1 Unidad]; LaptoL [1 Unidad]; Liusmila [75%] |
| 66 | Revisión del sprint del Módulo Usuarios y Roles |  |  | resources none → Irais [75%]; LaptoI [1 Unidad] |
| 67 | Revisión del sprint del Módulo Áreas |  |  | resources none → Darián [75%]; LaptoD [1 Unidad] |
| 68 | Revisión del sprint del Módulo Procesos |  |  | resources none → Eric [75%]; LaptoE [1 Unidad] |
| 69 | Revisión del sprint del Módulo Actividad |  |  | resources none → Jhair [75%]; LaptoJ [1 Unidad] |
| 70 | Revisión del sprint del Módulo Formulario |  |  | resources none → Liusmila [75%]; LaptoL [1 Unidad] |
| 72 | Envio de Entregables |  |  | resources none → Liusmila [75%]; LaptoL [1 Unidad] |
| 73 | Retrospectiva del Proyecto |  |  | resources none → Darián [75%]; Eric [75%]; Internet [0.1%]; Irais [75%]; Jhair [75%]; LaptoD [1 Unidad]; LaptoE [1 Unidad]; LaptoI [1 Unidad]; LaptoJ [1 Unidad]; LaptoL [1 Unidad]; Liusmila [75%] |
